# NasaWiki_Phase2_ProjectSchedule_Milestone1

Schedule from MS Project, 2018-05-21 to 2018-08-12, status date 2018-06-06, A marks actual dates.

## Calendars

- Standard: Mon-Fri 08:00-12:00, 13:00-17:00; Sat-Sun 08:00-17:00.

## Resources

| Resource |
| --- |
| Project Manager |
| Adeola Odusola |
| Charles Milk |
| Hung Pham |
| Kelli Corey |
| Laura Addiego |
| Samia Alam |

## Schedule

| ID | WBS | Task | Type | Duration | Start | Finish | Predecessors | Complete | Remaining | Baseline start | Baseline finish | Baseline duration | Total slack | Constraint | Resources | Work | Actual work |
| --- | --- | --- | --- | --- | --- | --- | --- | --- | --- | --- | --- | --- | --- | --- | --- | --- | --- |
| 1 | 1 | **NASA EVA Gamify - Phase2** |  | 87d? | 2018-05-21 A | 2018-08-12 |  | 15% | 73.86d? | 2018-05-21 | 2018-08-12 | 87d? | 0d |  |  | 4682h | 922h |
| 2 | 1.1 | **Milestone 1** |  | 21.75d | 2018-05-21 A | 2018-06-10 A |  | 100% |  | 2018-05-21 | 2018-06-10 | 21.75d |  |  |  | 922h | 922h |
| 3 | 1.1.1 | **Initiation** |  | 6d? | 2018-05-21 A | 2018-05-26 A |  | 100% |  | 2018-05-21 | 2018-05-26 | 6d? |  |  |  | 128h | 128h |
| 4 | 1.1.1.1 | Build Up Team |  | 1d? | 2018-05-21 A | 2018-05-21 A |  | 100% |  | 2018-05-21 | 2018-05-21 | 1d? |  | start no earlier than 2018-05-21 | Project Manager | 8h | 8h |
| 5 | 1.1.1.2 | Set up communication Channel | manual | 1d | 2018-05-22 A | 2018-05-22 A | 4 | 100% |  | 2018-05-22 | 2018-05-22 | 1d |  |  | Kelli Corey | 8h | 8h |
| 6 | 1.1.1.3 | Set up meeting | manual | 1d | 2018-05-22 A | 2018-05-22 A | 4 | 100% |  | 2018-05-22 | 2018-05-22 | 1d |  |  | Laura Addiego | 8h | 8h |
| 7 | 1.1.1.4 | **Kick-off meeting** |  | 1d | 2018-05-23 A | 2018-05-23 A |  | 100% |  | 2018-05-23 | 2018-05-23 | 1d |  |  |  | 16h | 16h |
| 8 | 1.1.1.4.1 | Project's background | manual | 1d | 2018-05-23 A | 2018-05-23 A | 5, 6 | 100% |  | 2018-05-23 | 2018-05-23 | 1d |  |  | Samia Alam | 8h | 8h |
| 9 | 1.1.1.4.2 | Project Management Approach | manual | 1d | 2018-05-23 A | 2018-05-23 A | 5, 6 | 100% |  | 2018-05-23 | 2018-05-23 | 1d |  |  | Kelli Corey | 8h | 8h |
| 10 | 1.1.1.5 | **Develop Project Charter** |  | 3d | 2018-05-24 A | 2018-05-26 A |  | 100% |  | 2018-05-24 | 2018-05-26 | 3d |  |  |  | 88h | 88h |
| 11 | 1.1.1.5.1 | Conduct Planning Meeting | manual | 1d | 2018-05-24 A | 2018-05-24 A |  | 100% |  | 2018-05-24 | 2018-05-24 | 1d |  |  | Kelli Corey; Adeola Odusola; Charles Milk; Hung Pham; Laura Addiego; Samia Alam | 48h | 48h |
| 12 | 1.1.1.5.2 | Develop High Level Work Breakdown Structure | manual | 1d | 2018-05-25 A | 2018-05-25 A | 11 | 100% |  | 2018-05-25 | 2018-05-25 | 1d |  |  | Charles Milk; Kelli Corey | 16h | 16h |
| 13 | 1.1.1.5.3 | Prepare Preliminary Project Scope Statement | manual | 1d | 2018-05-25 A | 2018-05-25 A | 11 | 100% |  | 2018-05-25 | 2018-05-25 | 1d |  |  | Hung Pham; Adeola Odusola | 16h | 16h |
| 14 | 1.1.1.5.4 | Develop Project Charter | manual | 1d | 2018-05-26 A | 2018-05-26 A | 12, 13 | 100% |  | 2018-05-26 | 2018-05-26 | 1d |  |  | Kelli Corey | 8h | 8h |
| 15 | 1.1.2 | **Planning** |  | 10.25d | 2018-05-28 A | 2018-06-06 A |  | 100% |  | 2018-05-28 | 2018-06-06 | 10.25d |  |  |  | 584h | 584h |
| 16 | 1.1.2.1 | **Define Scope** |  | 3d | 2018-05-28 A | 2018-05-30 A |  | 100% |  | 2018-05-28 | 2018-05-30 | 3d |  |  |  | 64h | 64h |
| 17 | 1.1.2.1.1 | Document Scope Management Plan | manual | 1d | 2018-05-28 A | 2018-05-28 A | 13 | 100% |  | 2018-05-28 | 2018-05-28 | 1d |  |  | Hung Pham; Adeola Odusola | 16h | 16h |
| 18 | 1.1.2.1.2 | Specify Deliverables and Acceptance Criteria | manual | 1d | 2018-05-29 A | 2018-05-29 A | 17 | 100% |  | 2018-05-29 | 2018-05-29 | 1d |  |  | Hung Pham; Adeola Odusola | 16h | 16h |
| 19 | 1.1.2.1.3 | Define Scope | manual | 1d | 2018-05-30 A | 2018-05-30 A | 18 | 100% |  | 2018-05-30 | 2018-05-30 | 1d |  |  | Hung Pham; Adeola Odusola | 16h | 16h |
| 20 | 1.1.2.1.4 | Document Assumptions & Constraints | manual | 1d | 2018-05-30 A | 2018-05-30 A | 18 | 100% |  | 2018-05-30 | 2018-05-30 | 1d |  |  | Adeola Odusola | 8h | 8h |
| 21 | 1.1.2.1.5 | Set up Milestones | manual | 1d | 2018-05-30 A | 2018-05-30 A |  | 100% |  | 2018-05-30 | 2018-05-30 | 1d |  |  | Kelli Corey | 8h | 8h |
| 22 | 1.1.2.2 | **Develop Project Schedule Management Plan** |  | 5d | 2018-05-31 A | 2018-06-04 A |  | 100% |  | 2018-05-31 | 2018-06-04 | 5d |  |  |  | 80h | 80h |
| 23 | 1.1.2.2.1 | Build Work Breakdown Structure | manual | 5d | 2018-05-31 A | 2018-06-04 A |  | 100% |  | 2018-05-31 | 2018-06-04 | 5d |  |  | Laura Addiego | 40h | 40h |
| 24 | 1.1.2.2.2 | Define Dependencies and develop Project Schedule Management Plan | manual | 5d | 2018-05-31 A | 2018-06-04 A |  | 100% |  | 2018-05-31 | 2018-06-04 | 5d |  |  | Laura Addiego | 40h | 40h |

| ID | WBS | Task | Type | Duration | Start | Finish | Predecessors | Complete | Baseline start | Baseline finish | Baseline duration | Total slack | Constraint | Resources | Work | Actual work |
| --- | --- | --- | --- | --- | --- | --- | --- | --- | --- | --- | --- | --- | --- | --- | --- | --- |
| 25 | 1.1.2.3 | **Develop Risk Plan** |  | 5.25d | 2018-05-31 A | 2018-06-04 A |  | 100% | 2018-05-31 | 2018-06-04 | 5.25d |  |  |  | 112h | 112h |
| 26 | 1.1.2.3.1 | Risk Management Plan | manual | 5d | 2018-05-31 A | 2018-06-04 A | 20 | 100% | 2018-05-31 | 2018-06-04 | 5d |  |  | Kelli Corey; Charles Milk | 80h | 80h |
| 27 | 1.1.2.3.2 | Identfigy Risks |  | 1d | 2018-06-01 A | 2018-06-01 A | 26 | 100% | 2018-06-01 | 2018-06-01 | 1d |  |  | Kelli Corey; Charles Milk | 16h | 16h |
| 28 | 1.1.2.3.3 | Analyze Risks |  | 1d | 2018-06-04 A | 2018-06-04 A | 27 | 100% | 2018-06-04 | 2018-06-04 | 1d |  |  | Kelli Corey; Charles Milk | 16h | 16h |
| 29 | 1.1.2.4 | **Plan for Quality** |  | 5d | 2018-05-31 A | 2018-06-04 A |  | 100% | 2018-05-31 | 2018-06-04 | 5d |  |  |  | 40h | 40h |
| 30 | 1.1.2.4.1 | Quality Management Plan | manual | 5d | 2018-05-31 A | 2018-06-04 A | 20 | 100% | 2018-05-31 | 2018-06-04 | 5d |  |  | Samia Alam | 40h | 40h |
| 31 | 1.1.2.5 | **Develop Project Supporting Plans** |  | 7d | 2018-05-31 A | 2018-06-06 A |  | 100% | 2018-05-31 | 2018-06-06 | 7d |  |  |  | 280h | 280h |
| 32 | 1.1.2.5.1 | Change Mangement Plan | manual | 7d | 2018-05-31 A | 2018-06-06 A |  | 100% | 2018-05-31 | 2018-06-06 | 7d |  |  | Charles Milk | 56h | 56h |
| 33 | 1.1.2.5.2 | Communications Mangement Plan | manual | 7d | 2018-05-31 A | 2018-06-06 A |  | 100% | 2018-05-31 | 2018-06-06 | 7d |  |  | Laura Addiego | 56h | 56h |
| 34 | 1.1.2.5.3 | Staffing Management Plan | manual | 7d | 2018-05-31 A | 2018-06-06 A |  | 100% | 2018-05-31 | 2018-06-06 | 7d |  |  | Kelli Corey | 56h | 56h |
| 35 | 1.1.2.5.4 | Resource Calendar | manual | 7d | 2018-05-31 A | 2018-06-06 A |  | 100% | 2018-05-31 | 2018-06-06 | 7d |  |  | Kelli Corey | 56h | 56h |
| 36 | 1.1.2.5.5 | Stakeholder Analysis | manual | 7d | 2018-05-31 A | 2018-06-06 A |  | 100% | 2018-05-31 | 2018-06-06 | 7d |  |  | Charles Milk | 56h | 56h |
| 37 | 1.1.2.6 | **Develop Project Management Plan** |  | 1d | 2018-06-06 A | 2018-06-06 A |  | 100% | 2018-06-06 | 2018-06-06 | 1d |  |  |  | 8h | 8h |
| 38 | 1.1.2.6.1 | Document Project Management Plan |  | 1d | 2018-06-06 A | 2018-06-06 A | 16, 22, 25, 29, 31 | 100% | 2018-06-06 | 2018-06-06 | 1d |  |  | Kelli Corey | 8h | 8h |
| 39 | 1.1.3 | **Submit Milestone 1 Requirements** |  | 4.12d | 2018-06-07 A | 2018-06-10 A |  | 100% | 2018-06-07 | 2018-06-10 | 4.12d |  |  |  | 210h | 210h |
| 40 | 1.1.3.1 | Compile an submit all necessary documents for submission |  | 4.12d | 2018-06-07 A | 2018-06-10 A | 37 | 100% | 2018-06-07 | 2018-06-10 | 4.12d |  |  | Adeola Odusola; Kelli Corey | 66h | 66h |
| 41 | 1.1.3.2 | Prepare and deliver presentation |  | 3d | 2018-06-07 A | 2018-06-09 A | 37 | 100% | 2018-06-07 | 2018-06-09 | 3d |  |  | Adeola Odusola; Charles Milk; Hung Pham; Kelli Corey; Laura Addiego; Samia Alam | 144h | 144h |
| 42 | 1.1.4 | Milestone 1 - Complete | milestone | 0d | 2018-06-10 A | 2018-06-10 A | 39 | 100% | 2018-06-10 | 2018-06-10 | 0d |  | start no earlier than 2018-06-10 |  |  |  |
| 43 | 1.2 | **Milestone 2** |  | 21.75d | 2018-06-11 | 2018-07-01 |  |  | 2018-06-11 | 2018-07-01 | 21.75d |  |  |  | 944h |  |
| 44 | 1.2.1 | **Execution** |  | 18d? | 2018-06-11 | 2018-06-28 |  |  | 2018-06-11 | 2018-06-28 | 18d? | 0d |  |  | 480h |  |
| 45 | 1.2.1.1 | Direct and Manage Project Execution | manual | 1d | 2018-06-11 | 2018-06-11 |  |  | 2018-06-11 | 2018-06-11 | 1d |  |  | Kelli Corey | 8h |  |
| 46 | 1.2.1.2 | **Project Environment** |  | 1d | 2018-06-11 | 2018-06-11 |  |  | 2018-06-11 | 2018-06-11 | 1d | 0d |  |  | 40h |  |
| 47 | 1.2.1.2.1 | Update Installation Instructions if needed | manual | 1d | 2018-06-11 | 2018-06-11 | 13 |  | 2018-06-11 | 2018-06-11 | 1d |  |  | Laura Addiego | 8h |  |
| 48 | 1.2.1.2.2 | Setup Individual local Environments | manual | 1d | 2018-06-11 | 2018-06-11 | 13 |  | 2018-06-11 | 2018-06-11 | 1d |  |  | Laura Addiego; Hung Pham; Adeola Odusola | 24h |  |
| 49 | 1.2.1.2.3 | Setup Dev. Environment for the team (GitHub) | manual | 1d | 2018-06-11 | 2018-06-11 | 13 |  | 2018-06-11 | 2018-06-11 | 1d |  |  | Laura Addiego | 8h |  |

| ID | WBS | Task | Type | Duration | Start | Finish | Predecessors | Baseline start | Baseline finish | Baseline duration | Total slack | Free slack | Resources | Work |
| --- | --- | --- | --- | --- | --- | --- | --- | --- | --- | --- | --- | --- | --- | --- |
| 50 | 1.2.1.3 | **Define Requirements** |  | 4d | 2018-06-11 | 2018-06-14 |  | 2018-06-11 | 2018-06-14 | 4d | 0d |  |  | 64h |
| 51 | 1.2.1.3.1 | Communicate with Stakeholders to define requirements for Phase 2 of the project | manual | 2d | 2018-06-11 | 2018-06-12 |  | 2018-06-11 | 2018-06-12 | 2d |  |  | Charles Milk | 16h |
| 52 | 1.2.1.3.2 | Develop Requirements Treaceability Matrix |  | 2d | 2018-06-13 | 2018-06-14 | 51 | 2018-06-13 | 2018-06-14 | 2d | 61.25d |  | Kelli Corey | 16h |
| 53 | 1.2.1.3.3 | Produce Requirements Document |  | 2d | 2018-06-13 | 2018-06-14 | 51 | 2018-06-13 | 2018-06-14 | 2d | 46.25d | 0d | Charles Milk; Kelli Corey | 32h |
| 54 | 1.2.1.4 | **Design Project** |  | 7d? | 2018-06-15 | 2018-06-21 |  | 2018-06-15 | 2018-06-21 | 7d? | 0d |  |  | 168h |
| 55 | 1.2.1.4.1 | Design New Features |  | 7d | 2018-06-15 | 2018-06-21 | 53 | 2018-06-15 | 2018-06-21 | 7d | 46.25d |  | Hung Pham | 56h |
| 56 | 1.2.1.4.2 | Adjust Database Design | manual | 7d | 2018-06-15 | 2018-06-21 |  | 2018-06-15 | 2018-06-21 | 7d |  |  | Laura Addiego | 56h |
| 57 | 1.2.1.4.3 | Adjust User Interface | manual | 7d | 2018-06-15 | 2018-06-21 |  | 2018-06-15 | 2018-06-21 | 7d |  |  | Adeola Odusola | 56h |
| 58 | 1.2.1.5 | **Develop Design Documents** |  | 3d | 2018-06-21 | 2018-06-24 |  | 2018-06-21 | 2018-06-24 | 3d | 0d |  |  | 72h |
| 59 | 1.2.1.5.1 | Database Design Document |  | 3d | 2018-06-21 | 2018-06-24 | 54 | 2018-06-21 | 2018-06-24 | 3d | 46.25d |  | Laura Addiego | 24h |
| 60 | 1.2.1.5.2 | Game Design Document | manual | 3d | 2018-06-21 | 2018-06-24 |  | 2018-06-21 | 2018-06-24 | 3d |  |  | Hung Pham | 24h |
| 61 | 1.2.1.5.3 | User Interface Design Document | manual | 3d | 2018-06-21 | 2018-06-24 |  | 2018-06-21 | 2018-06-24 | 3d |  |  | Adeola Odusola | 24h |
| 62 | 1.2.1.6 | **Develop Test Plans** |  | 4d | 2018-06-24 | 2018-06-28 |  | 2018-06-24 | 2018-06-28 | 4d | 0d |  |  | 128h |
| 63 | 1.2.1.6.1 | Database Test Plan | manual | 4d | 2018-06-24 | 2018-06-28 | 58 | 2018-06-24 | 2018-06-28 | 4d |  |  | Samia Alam | 32h |
| 64 | 1.2.1.6.2 | Script Test Plan | manual | 4d | 2018-06-24 | 2018-06-28 |  | 2018-06-24 | 2018-06-28 | 4d |  |  | Samia Alam | 32h |
| 65 | 1.2.1.6.3 | User Interface Test Plan | manual | 4d | 2018-06-24 | 2018-06-28 |  | 2018-06-24 | 2018-06-28 | 4d |  |  | Samia Alam | 32h |
| 66 | 1.2.1.6.4 | Overall Test Plan | manual | 4d | 2018-06-24 | 2018-06-28 |  | 2018-06-24 | 2018-06-28 | 4d |  |  | Samia Alam | 32h |
| 67 | 1.2.2 | **Update Project Management Plan and Supporting Documents** |  | 4d | 2018-06-24 | 2018-06-28 |  | 2018-06-24 | 2018-06-28 | 4d | 0d |  |  | 448h |
| 68 | 1.2.2.1 | Project Charter |  | 4d | 2018-06-24 | 2018-06-28 | 58 | 2018-06-24 | 2018-06-28 | 4d | 46.25d |  | Kelli Corey | 32h |
| 69 | 1.2.2.2 | Project Scope | manual | 4d | 2018-06-24 | 2018-06-28 |  | 2018-06-24 | 2018-06-28 | 4d |  |  | Hung Pham; Adeola Odusola | 64h |
| 70 | 1.2.2.3 | Milestones | manual | 4d | 2018-06-24 | 2018-06-28 |  | 2018-06-24 | 2018-06-28 | 4d |  |  | Kelli Corey | 32h |
| 71 | 1.2.2.4 | Change Mangement Plan | manual | 4d | 2018-06-24 | 2018-06-28 |  | 2018-06-24 | 2018-06-28 | 4d |  |  | Charles Milk | 32h |
| 72 | 1.2.2.5 | Communications Mangement Plan | manual | 4d | 2018-06-24 | 2018-06-28 |  | 2018-06-24 | 2018-06-28 | 4d |  |  | Laura Addiego | 32h |
| 73 | 1.2.2.6 | Quality Management Plan | manual | 4d | 2018-06-24 | 2018-06-28 |  | 2018-06-24 | 2018-06-28 | 4d |  |  | Charles Milk; Samia Alam | 64h |
| 74 | 1.2.2.7 | Risk Management Plan | manual | 4d | 2018-06-24 | 2018-06-28 |  | 2018-06-24 | 2018-06-28 | 4d |  |  | Charles Milk; Kelli Corey | 64h |
| 75 | 1.2.2.8 | Staffing Management Plan | manual | 4d | 2018-06-24 | 2018-06-28 |  | 2018-06-24 | 2018-06-28 | 4d |  |  | Kelli Corey | 32h |
| 76 | 1.2.2.9 | Resource Calendar | manual | 4d | 2018-06-24 | 2018-06-28 |  | 2018-06-24 | 2018-06-28 | 4d |  |  | Kelli Corey | 32h |
| 77 | 1.2.2.10 | Project Schedule Management Plan | manual | 4d | 2018-06-24 | 2018-06-28 |  | 2018-06-24 | 2018-06-28 | 4d |  |  | Laura Addiego | 32h |
| 78 | 1.2.2.11 | Project Management Plan | manual | 4d | 2018-06-24 | 2018-06-28 |  | 2018-06-24 | 2018-06-28 | 4d |  |  | Kelli Corey | 32h |

| ID | WBS | Task | Type | Duration | Start | Finish | Predecessors | Baseline start | Baseline finish | Baseline duration | Total slack | Free slack | Constraint | Resources | Work |
| --- | --- | --- | --- | --- | --- | --- | --- | --- | --- | --- | --- | --- | --- | --- | --- |
| 79 | 1.2.3 | **Introduce Design of New Features to Stakeholder** |  | 1d | 2018-06-28 | 2018-06-29 |  | 2018-06-28 | 2018-06-29 | 1d | 46.25d |  |  |  | 16h |
| 80 | 1.2.3.1 | Introduce Design of New Features to Stakeholder |  | 1d | 2018-06-28 | 2018-06-29 | 67 | 2018-06-28 | 2018-06-29 | 1d | 46.25d |  |  | Charles Milk | 8h |
| 81 | 1.2.3.2 | Document and adjust accroding to Staholder's feedback |  | 1d | 2018-06-28 | 2018-06-29 | 67 | 2018-06-28 | 2018-06-29 | 1d | 46.25d |  |  | Kelli Corey | 8h |
| 82 | 1.2.4 | Milestone 2 - Complete |  | 1.12d | 2018-07-01 | 2018-07-01 |  | 2018-07-01 | 2018-07-01 | 1.12d | 43.5d |  | finish no earlier than 2018-07-01 |  |  |
| 83 | 1.3 | **Milestone 3** |  | 21.75d | 2018-07-02 | 2018-07-22 |  | 2018-07-02 | 2018-07-22 | 21.75d |  |  |  |  | 888h |
| 84 | 1.3.1 | **New database Design** |  | 7d | 2018-07-02 | 2018-07-08 |  | 2018-07-02 | 2018-07-08 | 7d | 0d |  |  |  | 168h |
| 85 | 1.3.1.1 | Implement New Tables | manual | 7d | 2018-07-02 | 2018-07-08 |  | 2018-07-02 | 2018-07-08 | 7d |  |  |  | Laura Addiego | 56h |
| 86 | 1.3.1.2 | Adjust Table Relationships | manual | 7d | 2018-07-02 | 2018-07-08 |  | 2018-07-02 | 2018-07-08 | 7d |  |  |  | Laura Addiego | 56h |
| 87 | 1.3.1.3 | Test New Database Design | manual | 7d | 2018-07-02 | 2018-07-08 |  | 2018-07-02 | 2018-07-08 | 7d |  |  |  | Laura Addiego | 56h |
| 88 | 1.3.2 | **New Features** |  | 8.25d | 2018-07-08 | 2018-07-16 |  | 2018-07-08 | 2018-07-16 | 8.25d | 0d |  |  |  | 64h |
| 89 | 1.3.2.1 | Code New Features | manual | 5d | 2018-07-08 | 2018-07-13 | 84 | 2018-07-08 | 2018-07-13 | 5d |  |  |  | Hung Pham | 40h |
| 90 | 1.3.2.2 | Test New Features | manual | 3d | 2018-07-14 | 2018-07-16 | 89 | 2018-07-14 | 2018-07-16 | 3d |  |  |  | Hung Pham | 24h |
| 91 | 1.3.3 | **Adjustments to Interace Design** |  | 8.25d | 2018-07-08 | 2018-07-16 |  | 2018-07-08 | 2018-07-16 | 8.25d | 0d |  |  |  | 64h |
| 92 | 1.3.3.1 | Code New Features | manual | 5d | 2018-07-08 | 2018-07-13 | 84 | 2018-07-08 | 2018-07-13 | 5d |  |  |  | Adeola Odusola | 40h |
| 93 | 1.3.3.2 | Test New Features | manual | 3d | 2018-07-14 | 2018-07-16 | 92 | 2018-07-14 | 2018-07-16 | 3d |  |  |  | Adeola Odusola | 24h |
| 94 | 1.3.4 | **Update Project Management Plan and Supporting Documents** |  | 5d | 2018-07-13 | 2018-07-18 |  | 2018-07-13 | 2018-07-18 | 5d | 24.5d |  |  |  | 560h |
| 95 | 1.3.4.1 | Project Charter |  | 5d | 2018-07-13 | 2018-07-18 | 89, 92 | 2018-07-13 | 2018-07-18 | 5d | 26.5d |  |  | Kelli Corey | 40h |
| 96 | 1.3.4.2 | Project Scope |  | 5d | 2018-07-13 | 2018-07-18 | 89, 92 | 2018-07-13 | 2018-07-18 | 5d | 26.5d |  |  | Hung Pham; Adeola Odusola | 80h |
| 97 | 1.3.4.3 | Milestones |  | 5d | 2018-07-13 | 2018-07-18 | 89, 92 | 2018-07-13 | 2018-07-18 | 5d | 26.5d |  |  | Kelli Corey | 40h |
| 98 | 1.3.4.4 | Change Mangement Plan |  | 5d | 2018-07-13 | 2018-07-18 | 89, 92 | 2018-07-13 | 2018-07-18 | 5d | 26.5d |  |  | Charles Milk | 40h |
| 99 | 1.3.4.5 | Communications Mangement Plan |  | 5d | 2018-07-13 | 2018-07-18 | 89, 92 | 2018-07-13 | 2018-07-18 | 5d | 26.5d |  |  | Laura Addiego | 40h |
| 100 | 1.3.4.6 | Quality Management Plan |  | 5d | 2018-07-13 | 2018-07-18 | 89, 92 | 2018-07-13 | 2018-07-18 | 5d | 26.5d |  |  | Charles Milk; Samia Alam | 80h |
| 101 | 1.3.4.7 | Risk Management Plan |  | 5d | 2018-07-13 | 2018-07-18 | 89, 92 | 2018-07-13 | 2018-07-18 | 5d | 26.5d |  |  | Charles Milk; Kelli Corey | 80h |
| 102 | 1.3.4.8 | Staffing Management Plan |  | 5d | 2018-07-13 | 2018-07-18 | 89, 92 | 2018-07-13 | 2018-07-18 | 5d | 26.5d |  |  | Kelli Corey | 40h |
| 103 | 1.3.4.9 | Resource Calendar |  | 5d | 2018-07-13 | 2018-07-18 | 89, 92 | 2018-07-13 | 2018-07-18 | 5d | 26.5d |  |  | Kelli Corey | 40h |
| 104 | 1.3.4.10 | Project Schedule Management Plan |  | 5d | 2018-07-13 | 2018-07-18 | 89, 92 | 2018-07-13 | 2018-07-18 | 5d | 26.5d |  |  | Laura Addiego | 40h |
| 105 | 1.3.4.11 | Project Management Plan |  | 5d | 2018-07-13 | 2018-07-18 | 89, 92 | 2018-07-13 | 2018-07-18 | 5d | 24.5d | 0d |  | Kelli Corey | 40h |

| ID | WBS | Task | Type | Duration | Start | Finish | Predecessors | Baseline start | Baseline finish | Baseline duration | Total slack | Free slack | Constraint | Resources | Work |
| --- | --- | --- | --- | --- | --- | --- | --- | --- | --- | --- | --- | --- | --- | --- | --- |
| 106 | 1.3.5 | **Introduce New Features to Stakeholder** |  | 4d? | 2018-07-18 | 2018-07-22 |  | 2018-07-18 | 2018-07-22 | 4d? | 2d | 0d |  |  | 32h |
| 107 | 1.3.5.1 | Introduce Design of New Features to Stakeholder |  | 2d | 2018-07-18 | 2018-07-20 | 105 | 2018-07-18 | 2018-07-20 | 2d | 24.5d |  |  | Charles Milk | 16h |
| 108 | 1.3.5.2 | Document and adjust accroding to Staholder's feedback | manual | 2d | 2018-07-20 | 2018-07-22 | 105 | 2018-07-20 | 2018-07-22 | 2d |  |  |  | Kelli Corey | 16h |
| 109 | 1.3.6 | Milestone 3 - Complete | milestone | 0d | 2018-07-22 | 2018-07-22 | 106 | 2018-07-22 | 2018-07-22 | 0d | 22.5d |  |  |  |  |
| 110 | 1.4 | **Milestone 4** |  | 21.75d | 2018-07-23 | 2018-08-12 |  | 2018-07-23 | 2018-08-12 | 21.75d |  |  |  |  | 1928h |
| 111 | 1.4.1 | **Closing** |  | 21.25d | 2018-07-23 | 2018-08-12 |  | 2018-07-23 | 2018-08-12 | 21.25d | 0.5d |  |  |  | 1928h |
| 112 | 1.4.1.1 | **Handover Documents** |  | 21d | 2018-07-23 | 2018-08-12 |  | 2018-07-23 | 2018-08-12 | 21d | 0.75d |  |  |  | 768h |
| 113 | 1.4.1.1.1 | Prepare Documenatation |  | 10d | 2018-07-23 | 2018-08-01 |  | 2018-07-23 | 2018-08-01 | 10d | 0.75d | 0d |  | Samia Alam; Adeola Odusola; Charles Milk; Hung Pham; Kelli Corey; Laura Addiego | 480h |
| 114 | 1.4.1.1.2 | Review Documenation | manual | 5d | 2018-08-01 | 2018-08-06 | 113 | 2018-08-01 | 2018-08-06 | 5d |  |  |  | Charles Milk; Samia Alam; Adeola Odusola; Hung Pham; Kelli Corey; Laura Addiego | 240h |
| 115 | 1.4.1.1.3 | Verify All Documents exists in GitHub | manual | 5d | 2018-08-06 | 2018-08-11 | 114 | 2018-08-06 | 2018-08-11 | 5d |  |  |  | Laura Addiego | 40h |
| 116 | 1.4.1.1.4 | Submit Handover Documenation |  | 1d | 2018-08-11 | 2018-08-12 | 114, 115 | 2018-08-11 | 2018-08-12 | 1d | 0.75d |  |  | Kelli Corey | 8h |
| 117 | 1.4.1.2 | **Close Project** |  | 14d | 2018-07-30 | 2018-08-12 |  | 2018-07-30 | 2018-08-12 | 14d | 0d |  |  |  | 1160h |
| 118 | 1.4.1.2.1 | Assess Satisfaction | manual | 7d | 2018-07-30 | 2018-08-05 |  | 2018-07-30 | 2018-08-05 | 7d |  |  | start no earlier than 2018-07-30 | Charles Milk; Hung Pham; Kelli Corey; Laura Addiego; Samia Alam; Adeola Odusola | 336h |
| 119 | 1.4.1.2.2 | Summarize Project Results and Lessons Learned | manual | 7d | 2018-08-02 | 2018-08-08 |  | 2018-08-02 | 2018-08-08 | 7d |  |  |  | Samia Alam | 56h |
| 120 | 1.4.1.2.3 | Review and Recognize Team Performance | manual | 5d | 2018-08-06 | 2018-08-10 |  | 2018-08-06 | 2018-08-10 | 5d |  |  | start no earlier than 2018-08-06 | Charles Milk; Hung Pham; Kelli Corey; Laura Addiego; Samia Alam; Adeola Odusola | 240h |
| 121 | 1.4.1.2.4 | **Presentation** |  | 11d | 2018-08-02 | 2018-08-12 |  | 2018-08-02 | 2018-08-12 | 11d | 0d |  |  |  | 528h |
| 122 | 1.4.1.2.4.1 | Prepare Presentation | manual | 10d | 2018-08-02 | 2018-08-11 |  | 2018-08-02 | 2018-08-11 | 10d |  |  |  | Charles Milk; Samia Alam; Adeola Odusola; Hung Pham; Kelli Corey; Laura Addiego | 480h |
| 123 | 1.4.1.2.4.2 | Present and Demo Final Product |  | 1d | 2018-08-11 | 2018-08-12 | 122 | 2018-08-11 | 2018-08-12 | 1d | 0.5d |  |  | Kelli Corey; Charles Milk; Samia Alam; Adeola Odusola; Hung Pham; Laura Addiego | 48h |
| 124 | 1.4.2 | Milestone 4 - Complete | milestone | 0d | 2018-08-12 | 2018-08-12 | 117 | 2018-08-12 | 2018-08-12 | 0d | 0.5d |  |  |  |  |
| 126 | 1.5 | Initiation | manual | 21.75d | 2018-05-21 | 2018-06-10 |  | 2018-05-21 | 2018-06-10 | 21.75d |  |  |  |  |  |
| 127 | 1.6 | Design | manual | 16.5d | 2018-05-31 | 2018-06-15 |  | 2018-05-31 | 2018-06-15 | 16.5d |  |  |  |  |  |
| 128 | 1.7 | Implementation | manual | 51.75d | 2018-06-11 | 2018-07-30 |  | 2018-06-11 | 2018-07-30 | 51.75d |  |  |  |  |  |
| 129 | 1.8 | Verification | manual | 17.75d | 2018-07-27 | 2018-08-12 |  | 2018-07-27 | 2018-08-12 | 17.75d |  |  |  |  |  |
| 130 | 1.9 | Monitoring & Controlling | manual | 87d | 2018-05-21 | 2018-08-12 |  | 2018-05-21 | 2018-08-12 | 87d |  |  |  |  |  |
