# NasaWiki_Phase2_ProjectSchedule_Milestone2-Tasks

Schedule from MS Project, 2018-05-21 to 2018-08-12, status date 2018-06-06, A marks actual dates.

## Calendars

- Standard: Mon-Fri 08:00-12:00, 13:00-17:00; Sat-Sun 08:00-17:00.

## Resources

| Resource |
| --- |
| Project Manager |
| Adeola Odusola |
| Charles Milk |
| Hung Pham |
| Kelli Corey |
| Laura Addiego |
| Samia Alam |

## Schedule

| ID | WBS | Task | Type | Duration | Start | Finish | Predecessors | Complete | Remaining | Baseline start | Baseline finish | Baseline duration | Total slack | Constraint | Resources | Work | Actual work |
| --- | --- | --- | --- | --- | --- | --- | --- | --- | --- | --- | --- | --- | --- | --- | --- | --- | --- |
| 1 | 1 | **NASA EVA Gamify - Phase2** |  | 87d? | 2018-05-21 A | 2018-08-12 |  | 35% | 56.47d? | 2018-05-21 | 2018-08-12 | 87d? | 0d |  |  | 3619h | 1756h |
| 2 | 1.1 | **Milestone 1** |  | 21.75d | 2018-05-21 A | 2018-06-10 A |  | 100% |  | 2018-05-21 | 2018-06-10 | 21.75d |  |  |  | 922h | 922h |
| 3 | 1.1.1 | **Requirements** |  | 17.5d? | 2018-05-21 A | 2018-06-06 A |  | 100% |  | 2018-05-21 | 2018-05-26 | 6d? |  |  |  | 712h | 712h |
| 4 | 1.1.1.1 | Build Up Team |  | 1d? | 2018-05-21 A | 2018-05-21 A |  | 100% |  | 2018-05-21 | 2018-05-21 | 1d? |  | start no earlier than 2018-05-21 | Project Manager | 8h | 8h |
| 5 | 1.1.1.2 | Set up communication Channel | manual | 1d | 2018-05-22 A | 2018-05-22 A | 4 | 100% |  | 2018-05-22 | 2018-05-22 | 1d |  |  | Kelli Corey | 8h | 8h |
| 6 | 1.1.1.3 | Set up meeting | manual | 1d | 2018-05-22 A | 2018-05-22 A | 4 | 100% |  | 2018-05-22 | 2018-05-22 | 1d |  |  | Laura Addiego | 8h | 8h |
| 7 | 1.1.1.4 | **Kick-off meeting** |  | 1d | 2018-05-23 A | 2018-05-23 A |  | 100% |  | 2018-05-23 | 2018-05-23 | 1d |  |  |  | 16h | 16h |
| 8 | 1.1.1.4.1 | Project's background | manual | 1d | 2018-05-23 A | 2018-05-23 A | 5, 6 | 100% |  | 2018-05-23 | 2018-05-23 | 1d |  |  | Samia Alam | 8h | 8h |
| 9 | 1.1.1.4.2 | Project Management Approach | manual | 1d | 2018-05-23 A | 2018-05-23 A | 5, 6 | 100% |  | 2018-05-23 | 2018-05-23 | 1d |  |  | Kelli Corey | 8h | 8h |
| 10 | 1.1.1.5 | **Develop Project Charter** |  | 3d | 2018-05-24 A | 2018-05-26 A |  | 100% |  | 2018-05-24 | 2018-05-26 | 3d |  |  |  | 88h | 88h |
| 11 | 1.1.1.5.1 | Conduct Planning Meeting | manual | 1d | 2018-05-24 A | 2018-05-24 A |  | 100% |  | 2018-05-24 | 2018-05-24 | 1d |  |  | Kelli Corey; Adeola Odusola; Charles Milk; Hung Pham; Laura Addiego; Samia Alam | 48h | 48h |
| 12 | 1.1.1.5.2 | Develop High Level Work Breakdown Structure | manual | 1d | 2018-05-25 A | 2018-05-25 A | 11 | 100% |  | 2018-05-25 | 2018-05-25 | 1d |  |  | Charles Milk; Kelli Corey | 16h | 16h |
| 13 | 1.1.1.5.3 | Prepare Preliminary Project Scope Statement | manual | 1d | 2018-05-25 A | 2018-05-25 A | 11 | 100% |  | 2018-05-25 | 2018-05-25 | 1d |  |  | Hung Pham; Adeola Odusola | 16h | 16h |
| 14 | 1.1.1.5.4 | Develop Project Charter | manual | 1d | 2018-05-26 A | 2018-05-26 A | 12, 13 | 100% |  | 2018-05-26 | 2018-05-26 | 1d |  |  | Kelli Corey | 8h | 8h |
| 15 | 1.1.1.6 | **Define Scope** |  | 3d | 2018-05-28 A | 2018-05-30 A |  | 100% |  | 2018-05-28 | 2018-05-30 | 3d |  |  |  | 64h | 64h |
| 16 | 1.1.1.6.1 | Document Scope Management Plan | manual | 1d | 2018-05-28 A | 2018-05-28 A | 13 | 100% |  | 2018-05-28 | 2018-05-28 | 1d |  |  | Hung Pham; Adeola Odusola | 16h | 16h |
| 17 | 1.1.1.6.2 | Specify Deliverables and Acceptance Criteria | manual | 1d | 2018-05-29 A | 2018-05-29 A | 16 | 100% |  | 2018-05-29 | 2018-05-29 | 1d |  |  | Hung Pham; Adeola Odusola | 16h | 16h |
| 18 | 1.1.1.6.3 | Define Scope | manual | 1d | 2018-05-30 A | 2018-05-30 A | 17 | 100% |  | 2018-05-30 | 2018-05-30 | 1d |  |  | Hung Pham; Adeola Odusola | 16h | 16h |
| 19 | 1.1.1.6.4 | Document Assumptions & Constraints | manual | 1d | 2018-05-30 A | 2018-05-30 A | 17 | 100% |  | 2018-05-30 | 2018-05-30 | 1d |  |  | Adeola Odusola | 8h | 8h |
| 20 | 1.1.1.6.5 | Set up Milestones | manual | 1d | 2018-05-30 A | 2018-05-30 A |  | 100% |  | 2018-05-30 | 2018-05-30 | 1d |  |  | Kelli Corey | 8h | 8h |
| 21 | 1.1.1.7 | **Develop Project Schedule Management Plan** |  | 5d | 2018-05-31 A | 2018-06-04 A |  | 100% |  | 2018-05-31 | 2018-06-04 | 5d |  |  |  | 80h | 80h |
| 22 | 1.1.1.7.1 | Build Work Breakdown Structure | manual | 5d | 2018-05-31 A | 2018-06-04 A |  | 100% |  | 2018-05-31 | 2018-06-04 | 5d |  |  | Laura Addiego | 40h | 40h |
| 23 | 1.1.1.7.2 | Define Dependencies and develop Project Schedule Management Plan | manual | 5d | 2018-05-31 A | 2018-06-04 A |  | 100% |  | 2018-05-31 | 2018-06-04 | 5d |  |  | Laura Addiego | 40h | 40h |
| 24 | 1.1.1.8 | **Develop Risk Plan** |  | 5.25d | 2018-05-31 A | 2018-06-04 A |  | 100% |  | 2018-05-31 | 2018-06-04 | 5.25d |  |  |  | 112h | 112h |
| 25 | 1.1.1.8.1 | Risk Management Plan | manual | 5d | 2018-05-31 A | 2018-06-04 A | 19 | 100% |  | 2018-05-31 | 2018-06-04 | 5d |  |  | Kelli Corey; Charles Milk | 80h | 80h |
| 26 | 1.1.1.8.2 | Identfigy Risks |  | 1d | 2018-06-01 A | 2018-06-01 A | 25 | 100% |  | 2018-06-01 | 2018-06-01 | 1d |  |  | Kelli Corey; Charles Milk | 16h | 16h |
| 27 | 1.1.1.8.3 | Analyze Risks |  | 1d | 2018-06-04 A | 2018-06-04 A | 26 | 100% |  | 2018-06-04 | 2018-06-04 | 1d |  |  | Kelli Corey; Charles Milk | 16h | 16h |

| ID | WBS | Task | Type | Duration | Start | Finish | Predecessors | Complete | Remaining | Actual finish | Baseline start | Baseline finish | Baseline duration | Constraint | Resources | Work | Actual work |
| --- | --- | --- | --- | --- | --- | --- | --- | --- | --- | --- | --- | --- | --- | --- | --- | --- | --- |
| 28 | 1.1.1.9 | **Plan for Quality** |  | 5d | 2018-05-31 A | 2018-06-04 A |  | 100% |  |  | 2018-05-31 | 2018-06-04 | 5d |  |  | 40h | 40h |
| 29 | 1.1.1.9.1 | Quality Management Plan | manual | 5d | 2018-05-31 A | 2018-06-04 A | 19 | 100% |  |  | 2018-05-31 | 2018-06-04 | 5d |  | Samia Alam | 40h | 40h |
| 30 | 1.1.1.10 | **Develop Project Supporting Plans** |  | 7d | 2018-05-31 A | 2018-06-06 A |  | 100% |  |  | 2018-05-31 | 2018-06-06 | 7d |  |  | 280h | 280h |
| 31 | 1.1.1.10.1 | Change Mangement Plan | manual | 7d | 2018-05-31 A | 2018-06-06 A |  | 100% |  |  | 2018-05-31 | 2018-06-06 | 7d |  | Charles Milk | 56h | 56h |
| 32 | 1.1.1.10.2 | Communications Mangement Plan | manual | 7d | 2018-05-31 A | 2018-06-06 A |  | 100% |  |  | 2018-05-31 | 2018-06-06 | 7d |  | Laura Addiego | 56h | 56h |
| 33 | 1.1.1.10.3 | Staffing Management Plan | manual | 7d | 2018-05-31 A | 2018-06-06 A |  | 100% |  |  | 2018-05-31 | 2018-06-06 | 7d |  | Kelli Corey | 56h | 56h |
| 34 | 1.1.1.10.4 | Resource Calendar | manual | 7d | 2018-05-31 A | 2018-06-06 A |  | 100% |  |  | 2018-05-31 | 2018-06-06 | 7d |  | Kelli Corey | 56h | 56h |
| 35 | 1.1.1.10.5 | Stakeholder Analysis | manual | 7d | 2018-05-31 A | 2018-06-06 A |  | 100% |  |  | 2018-05-31 | 2018-06-06 | 7d |  | Charles Milk | 56h | 56h |
| 36 | 1.1.1.11 | **Develop Project Management Plan** |  | 1d | 2018-06-06 A | 2018-06-06 A |  | 100% |  |  | 2018-06-06 | 2018-06-06 | 1d |  |  | 8h | 8h |
| 37 | 1.1.1.11.1 | Document Project Management Plan |  | 1d | 2018-06-06 A | 2018-06-06 A | 15, 21, 24, 28, 30 | 100% |  |  | 2018-06-06 | 2018-06-06 | 1d |  | Kelli Corey | 8h | 8h |
| 38 | 1.1.2 | **Submit Milestone 1 Requirements** |  | 4.12d | 2018-06-07 A | 2018-06-10 A |  | 100% |  |  | 2018-06-07 | 2018-06-10 | 4.12d |  |  | 210h | 210h |
| 39 | 1.1.2.1 | Compile an submit all necessary documents for submission |  | 4.12d | 2018-06-07 A | 2018-06-10 A | 36 | 100% |  |  | 2018-06-07 | 2018-06-10 | 4.12d |  | Adeola Odusola; Kelli Corey | 66h | 66h |
| 40 | 1.1.2.2 | Prepare and deliver presentation |  | 3d | 2018-06-07 A | 2018-06-09 A | 36 | 100% |  |  | 2018-06-07 | 2018-06-09 | 3d |  | Adeola Odusola; Charles Milk; Hung Pham; Kelli Corey; Laura Addiego; Samia Alam | 144h | 144h |
| 41 | 1.1.3 | Milestone 1 - Complete | milestone | 0d | 2018-06-10 A | 2018-06-10 A | 38 | 100% |  |  | 2018-06-10 | 2018-06-10 | 0d | start no earlier than 2018-06-10 |  |  |  |
| 42 | 1.2 | **Milestone 2** |  | 21.75d | 2018-06-11 A | 2018-07-01 | 2 | 81% | 4.13d |  | 2018-06-11 | 2018-07-01 | 21.75d |  |  | 834h | 834h |
| 43 | 1.2.1 | **Requirements (Cont.)** |  | 10.25d | 2018-06-11 A | 2018-06-20 |  | 100% |  | 2018-06-14 | 2018-06-11 | 2018-06-28 | 18d? |  |  | 96h | 96h |
| 44 | 1.2.1.1 | Direct and Manage Project Design | manual | 1d | 2018-06-11 A | 2018-06-11 A |  | 100% |  |  | 2018-06-11 | 2018-06-11 | 1d |  | Kelli Corey | 8h | 8h |
| 45 | 1.2.1.2 | **Project Environment** |  | 1d | 2018-06-11 A | 2018-06-11 A |  | 100% |  |  | 2018-06-11 | 2018-06-11 | 1d |  |  | 40h | 40h |
| 46 | 1.2.1.2.1 | Update Installation Instructions if needed | manual | 1d | 2018-06-11 A | 2018-06-11 A | 13 | 100% |  |  | 2018-06-11 | 2018-06-11 | 1d |  | Laura Addiego | 8h | 8h |
| 47 | 1.2.1.2.2 | Setup Individual local Environments | manual | 1d | 2018-06-11 A | 2018-06-11 A | 13 | 100% |  |  | 2018-06-11 | 2018-06-11 | 1d |  | Laura Addiego; Hung Pham; Adeola Odusola | 24h | 24h |
| 48 | 1.2.1.2.3 | Setup Dev. Environment for the team (GitHub) | manual | 1d | 2018-06-11 A | 2018-06-11 A | 13 | 100% |  |  | 2018-06-11 | 2018-06-11 | 1d |  | Laura Addiego | 8h | 8h |
| 49 | 1.2.1.3 | **Define Requirements** |  | 4d | 2018-06-11 A | 2018-06-14 A |  | 100% |  |  | 2018-06-11 | 2018-06-14 | 4d |  |  | 48h | 48h |
| 50 | 1.2.1.3.1 | Communicate with Stakeholders to define requirements for Phase 2 of the project | manual | 2d | 2018-06-11 A | 2018-06-12 A |  | 100% |  |  | 2018-06-11 | 2018-06-12 | 2d |  | Charles Milk | 16h | 16h |
| 51 | 1.2.1.3.2 | Produce Requirements Document |  | 2d | 2018-06-13 A | 2018-06-14 A | 50 | 100% |  |  | 2018-06-13 | 2018-06-14 | 2d |  | Charles Milk; Kelli Corey | 32h | 32h |

| ID | WBS | Task | Type | Duration | Start | Finish | Predecessors | Complete | Actual finish | Baseline start | Baseline finish | Baseline duration | Constraint | Resources | Work | Actual work |
| --- | --- | --- | --- | --- | --- | --- | --- | --- | --- | --- | --- | --- | --- | --- | --- | --- |
| 52 | 1.2.2 | **Design** |  | 11.5d | 2018-06-21 A | 2018-07-01 | 43 | 100% | 2018-06-30 |  |  |  |  |  | 483h | 483h |
| 53 | 1.2.2.1 | **Design Project** |  | 5.25d | 2018-06-21 A | 2018-06-25 A | 49 | 100% |  | 2018-06-15 | 2018-06-21 | 7d? |  |  | 120h | 120h |
| 54 | 1.2.2.1.1 | Design New Features |  | 5d | 2018-06-21 A | 2018-06-25 A |  | 100% |  | 2018-06-15 | 2018-06-21 | 7d |  | Hung Pham | 40h | 40h |
| 55 | 1.2.2.1.2 | Create the Database Design | manual | 5d | 2018-06-21 A | 2018-06-25 A |  | 100% |  | 2018-06-15 | 2018-06-21 | 7d |  | Laura Addiego | 40h | 40h |
| 56 | 1.2.2.1.3 | Create the User Interface | manual | 5d | 2018-06-21 A | 2018-06-25 A |  | 100% |  | 2018-06-15 | 2018-06-21 | 7d |  | Adeola Odusola | 40h | 40h |
| 57 | 1.2.2.2 | **Create Design Documents** |  | 3d | 2018-06-26 A | 2018-06-28 A |  | 100% |  | 2018-06-21 | 2018-06-24 | 3d |  |  | 48h | 48h |
| 58 | 1.2.2.2.1 | Database Design Document |  | 3d | 2018-06-26 A | 2018-06-28 A | 55 | 100% |  | 2018-06-21 | 2018-06-24 | 3d | finish no earlier than 2018-06-26 | Laura Addiego | 24h | 24h |
| 59 | 1.2.2.2.2 | Game Design Document | manual | 3d | 2018-06-26 A | 2018-06-28 A | 54 | 100% |  | 2018-06-21 | 2018-06-24 | 3d |  | Hung Pham | 24h | 24h |
| 60 | 1.2.2.3 | **Develop Test Plans** |  | 8.25d | 2018-06-21 A | 2018-06-28 A |  | 100% |  | 2018-06-24 | 2018-06-28 | 4d |  |  | 264h | 264h |
| 61 | 1.2.2.3.1 | Draft Database Test Plan | manual | 8.25d | 2018-06-21 A | 2018-06-28 A | 58 | 100% |  | 2018-06-24 | 2018-06-28 | 4d |  | Samia Alam | 66h | 66h |
| 62 | 1.2.2.3.2 | Draft Test Plan | manual | 8.25d | 2018-06-21 A | 2018-06-28 A |  | 100% |  | 2018-06-24 | 2018-06-28 | 4d |  | Samia Alam | 66h | 66h |
| 63 | 1.2.2.3.3 | Draft Interface Test Plan | manual | 8.25d | 2018-06-21 A | 2018-06-28 A |  | 100% |  | 2018-06-24 | 2018-06-28 | 4d |  | Samia Alam | 66h | 66h |
| 64 | 1.2.2.3.4 | Draft Overall Test Plan | manual | 8.25d | 2018-06-21 A | 2018-06-28 A |  | 100% |  | 2018-06-24 | 2018-06-28 | 4d |  | Samia Alam | 66h | 66h |
| 65 | 1.2.2.4 | **Review Design Documents** |  | 2.12d | 2018-06-29 A | 2018-06-30 A |  | 100% |  | 2018-06-21 | 2018-06-24 | 3d |  |  | 51h | 51h |
| 66 | 1.2.2.4.1 | Review Database Design Document |  | 2.12d | 2018-06-29 A | 2018-06-30 A | 61 | 100% |  | 2018-06-21 | 2018-06-24 | 3d | finish no earlier than 2018-06-30 | Laura Addiego | 17h | 17h |
| 67 | 1.2.2.4.2 | Review Game Design Document | manual | 2.12d | 2018-06-29 A | 2018-06-30 A | 59 | 100% |  | 2018-06-21 | 2018-06-24 | 3d |  | Samia Alam | 17h | 17h |
| 68 | 1.2.2.4.3 | Review Test Plan | manual | 2.12d | 2018-06-29 A | 2018-06-30 A | 62 | 100% |  |  |  |  |  | Samia Alam | 17h | 17h |
| 69 | 1.2.3 | **Update Project Management Plan and Supporting Documents** |  | 2.12d | 2018-06-29 A | 2018-06-30 A | 49, 57, 60 | 100% |  | 2018-06-24 | 2018-06-28 | 4d |  |  | 221h | 221h |
| 70 | 1.2.3.1 | Project Charter |  | 2.12d | 2018-06-29 A | 2018-06-30 A |  | 100% |  | 2018-06-24 | 2018-06-28 | 4d | finish no earlier than 2018-06-30 | Kelli Corey | 17h | 17h |
| 71 | 1.2.3.2 | Project Scope | manual | 2.12d | 2018-06-29 A | 2018-06-30 A |  | 100% |  | 2018-06-24 | 2018-06-28 | 4d |  | Hung Pham; Adeola Odusola | 34h | 34h |
| 72 | 1.2.3.3 | Milestones | manual | 2.12d | 2018-06-29 A | 2018-06-30 A |  | 100% |  | 2018-06-24 | 2018-06-28 | 4d |  | Kelli Corey | 17h | 17h |
| 73 | 1.2.3.4 | Change Mangement Plan | manual | 2.12d | 2018-06-29 A | 2018-06-30 A |  | 100% |  | 2018-06-24 | 2018-06-28 | 4d |  | Charles Milk | 17h | 17h |
| 74 | 1.2.3.5 | Communications Mangement Plan | manual | 2.12d | 2018-06-29 A | 2018-06-30 A |  | 100% |  | 2018-06-24 | 2018-06-28 | 4d |  | Laura Addiego | 17h | 17h |
| 75 | 1.2.3.6 | Quality Management Plan | manual | 2.12d | 2018-06-29 A | 2018-06-30 A |  | 100% |  | 2018-06-24 | 2018-06-28 | 4d |  | Charles Milk; Samia Alam | 34h | 34h |
| 76 | 1.2.3.7 | Risk Management Plan | manual | 2.12d | 2018-06-29 A | 2018-06-30 A |  | 100% |  | 2018-06-24 | 2018-06-28 | 4d |  | Charles Milk; Kelli Corey | 34h | 34h |
| 77 | 1.2.3.8 | Resource Calendar | manual | 2.12d | 2018-06-29 A | 2018-06-30 A |  | 100% |  | 2018-06-24 | 2018-06-28 | 4d |  | Kelli Corey | 17h | 17h |
| 78 | 1.2.3.9 | Project Schedule Management Plan | manual | 2.12d | 2018-06-29 A | 2018-06-30 A |  | 100% |  | 2018-06-24 | 2018-06-28 | 4d |  | Laura Addiego | 17h | 17h |
| 79 | 1.2.3.10 | Project Management Plan | manual | 2.12d | 2018-06-29 A | 2018-06-30 A |  | 100% |  | 2018-06-24 | 2018-06-28 | 4d |  | Kelli Corey | 17h | 17h |

| ID | WBS | Task | Type | Duration | Start | Finish | Predecessors | Complete | Baseline start | Baseline finish | Baseline duration | Total slack | Constraint | Resources | Work | Actual work |
| --- | --- | --- | --- | --- | --- | --- | --- | --- | --- | --- | --- | --- | --- | --- | --- | --- |
| 80 | 1.2.4 | **Introduce Design of New Features to Stakeholder** |  | 1d | 2018-06-29 A | 2018-06-29 A | 49 | 100% | 2018-06-28 | 2018-06-29 | 1d |  |  |  | 16h | 16h |
| 81 | 1.2.4.1 | Introduce Design of New Features to Stakeholder |  | 1d | 2018-06-29 A | 2018-06-29 A |  | 100% | 2018-06-28 | 2018-06-29 | 1d |  |  | Charles Milk | 8h | 8h |
| 82 | 1.2.4.2 | Document and adjust accroding to Staholder's feedback |  | 1d | 2018-06-29 A | 2018-06-29 A |  | 100% | 2018-06-28 | 2018-06-29 | 1d |  |  | Kelli Corey | 8h | 8h |
| 83 | 1.2.5 | Submit the following documents: Project Charter, Project Management Plan, Stakeholder Analysis, Project Requirements, Database Design, Game Desing, Test Plan, User Profile Desig, and Project Schedule | manual | 1.12d | 2018-07-01 A | 2018-07-01 A |  | 100% |  |  |  |  |  | Adeola Odusola; Kelli Corey | 18h | 18h |
| 84 | 1.2.6 | Milestone 2 - Complete |  | 21.75d | 2018-06-11 | 2018-07-01 |  |  | 2018-07-01 | 2018-07-01 | 1.12d | 43.5d | start no earlier than 2018-06-11 |  |  |  |
| 85 | 1.3 | **Milestone 3** |  | 21.75d | 2018-07-02 | 2018-07-22 | 42 |  | 2018-07-02 | 2018-07-22 | 21.75d |  |  |  | 838h |  |
| 86 | 1.3.1 | **Design (Cont.)** |  | 2d | 2018-07-02 | 2018-07-03 |  |  |  |  |  | 0d |  |  | 48h |  |
| 87 | 1.3.1.1 | Finalize Database Design | manual | 2d | 2018-07-02 | 2018-07-03 |  |  |  |  |  |  |  | Laura Addiego | 16h |  |
| 88 | 1.3.1.2 | Finalize Game Design | manual | 2d | 2018-07-02 | 2018-07-03 |  |  |  |  |  |  |  | Adeola Odusola; Hung Pham | 32h |  |
| 89 | 1.3.2 | **Coding** |  | 19.25d | 2018-07-04 | 2018-07-22 | 86 |  |  |  |  |  |  |  | 754h |  |
| 90 | 1.3.2.1 | **New database Design** |  | 4d | 2018-07-04 | 2018-07-07 |  |  | 2018-07-02 | 2018-07-08 | 7d | 0d |  |  | 32h |  |
| 91 | 1.3.2.1.1 | Implement New Tables | manual | 2d | 2018-07-04 | 2018-07-05 |  |  | 2018-07-02 | 2018-07-08 | 7d |  |  | Laura Addiego | 16h |  |
| 92 | 1.3.2.1.2 | Adjust Table Relationships | manual | 1d | 2018-07-06 | 2018-07-06 | 91 |  | 2018-07-02 | 2018-07-08 | 7d |  |  | Laura Addiego | 8h |  |
| 93 | 1.3.2.1.3 | Test New Database Design | manual | 1d | 2018-07-07 | 2018-07-07 | 92 |  | 2018-07-02 | 2018-07-08 | 7d |  |  | Laura Addiego | 8h |  |
| 94 | 1.3.2.2 | **New Features: Point Measurement** |  | 5d | 2018-07-08 | 2018-07-13 |  |  | 2018-07-08 | 2018-07-16 | 8.25d | 0d |  |  | 40h |  |
| 95 | 1.3.2.2.1 | Code New Features: Point Measurement | manual | 5d | 2018-07-08 | 2018-07-13 |  |  | 2018-07-08 | 2018-07-13 | 5d |  |  | Hung Pham | 40h |  |
| 96 | 1.3.2.3 | **New Features: Badge Reward** |  | 5d | 2018-07-08 | 2018-07-13 |  |  | 2018-07-08 | 2018-07-16 | 8.25d | 0d |  |  | 40h |  |
| 97 | 1.3.2.3.1 | Code New Features: Badge Reward | manual | 5d | 2018-07-08 | 2018-07-13 |  |  | 2018-07-08 | 2018-07-13 | 5d |  |  | Hung Pham | 40h |  |
| 98 | 1.3.2.4 | **New Features: Leaderboard** |  | 5d | 2018-07-08 | 2018-07-13 |  |  | 2018-07-08 | 2018-07-16 | 8.25d | 0d |  |  | 40h |  |
| 99 | 1.3.2.4.1 | Code New Features: Leaderboard | manual | 5d | 2018-07-08 | 2018-07-13 |  |  | 2018-07-08 | 2018-07-13 | 5d |  |  | Hung Pham | 40h |  |
| 100 | 1.3.2.5 | **Adjustments to Interace Design** |  | 5.25d | 2018-07-08 | 2018-07-13 |  |  | 2018-07-08 | 2018-07-16 | 8.25d | 0d |  |  | 42h |  |
| 101 | 1.3.2.5.1 | Code Interface Design | manual | 5.25d | 2018-07-08 | 2018-07-13 | 90 |  | 2018-07-08 | 2018-07-13 | 5d |  |  | Adeola Odusola | 42h |  |
| 102 | 1.3.2.6 | **Update Project Management Plan and Supporting Documents** |  | 5d | 2018-07-14 | 2018-07-18 |  |  | 2018-07-13 | 2018-07-18 | 5d | 26.25d |  |  | 560h |  |
| 103 | 1.3.2.6.1 | Project Charter |  | 5d | 2018-07-14 | 2018-07-18 | 95, 101, 99, 97 |  | 2018-07-13 | 2018-07-18 | 5d | 26.25d |  | Kelli Corey | 40h |  |
| 104 | 1.3.2.6.2 | Project Scope |  | 5d | 2018-07-14 | 2018-07-18 | 95, 101, 99, 97 |  | 2018-07-13 | 2018-07-18 | 5d | 26.25d |  | Hung Pham; Adeola Odusola | 80h |  |
| 105 | 1.3.2.6.3 | Milestones |  | 5d | 2018-07-14 | 2018-07-18 | 95, 101, 99, 97 |  | 2018-07-13 | 2018-07-18 | 5d | 26.25d |  | Kelli Corey | 40h |  |
| 106 | 1.3.2.6.4 | Change Mangement Plan |  | 5d | 2018-07-14 | 2018-07-18 | 95, 101, 99, 97 |  | 2018-07-13 | 2018-07-18 | 5d | 26.25d |  | Charles Milk | 40h |  |
| 107 | 1.3.2.6.5 | Communications Mangement Plan |  | 5d | 2018-07-14 | 2018-07-18 | 95, 101, 99, 97 |  | 2018-07-13 | 2018-07-18 | 5d | 26.25d |  | Laura Addiego | 40h |  |
| 108 | 1.3.2.6.6 | Quality Management Plan |  | 5d | 2018-07-14 | 2018-07-18 | 95, 101, 99, 97 |  | 2018-07-13 | 2018-07-18 | 5d | 26.25d |  | Charles Milk; Samia Alam | 80h |  |
| 109 | 1.3.2.6.7 | Risk Management Plan |  | 5d | 2018-07-14 | 2018-07-18 | 95, 101, 99, 97 |  | 2018-07-13 | 2018-07-18 | 5d | 26.25d |  | Charles Milk; Kelli Corey | 80h |  |
| 110 | 1.3.2.6.8 | Staffing Management Plan |  | 5d | 2018-07-14 | 2018-07-18 | 95, 101, 99, 97 |  | 2018-07-13 | 2018-07-18 | 5d | 26.25d |  | Kelli Corey | 40h |  |
| 111 | 1.3.2.6.9 | Resource Calendar |  | 5d | 2018-07-14 | 2018-07-18 | 95, 101, 99, 97 |  | 2018-07-13 | 2018-07-18 | 5d | 26.25d |  | Kelli Corey | 40h |  |
| 112 | 1.3.2.6.10 | Project Schedule Management Plan |  | 5d | 2018-07-14 | 2018-07-18 | 95, 101, 99, 97 |  | 2018-07-13 | 2018-07-18 | 5d | 26.25d |  | Laura Addiego | 40h |  |
| 113 | 1.3.2.6.11 | Project Management Plan |  | 5d | 2018-07-14 | 2018-07-18 | 95, 101, 99, 97 |  | 2018-07-13 | 2018-07-18 | 5d | 26.25d |  | Kelli Corey | 40h |  |
| 114 | 1.3.3 | Submit the following documents: Project Charter, Project Management Plan, Stakeholder Analysis, Project Requirements, Database Design, Game Desing, Test Plan, User Profile Desig, and Project Schedule | manual | 2.25d | 2018-07-21 | 2018-07-22 |  |  |  |  |  |  |  | Adeola Odusola; Kelli Corey | 36h |  |
| 115 | 1.3.4 | Milestone 3 - Complete | milestone | 0d | 2018-07-22 | 2018-07-22 |  |  | 2018-07-22 | 2018-07-22 | 0d | 22.88d | start no earlier than 2018-07-22 |  |  |  |

| ID | WBS | Task | Type | Duration | Start | Finish | Predecessors | Baseline start | Baseline finish | Baseline duration | Total slack | Free slack | Constraint | Resources | Work |
| --- | --- | --- | --- | --- | --- | --- | --- | --- | --- | --- | --- | --- | --- | --- | --- |
| 116 | 1.4 | **Milestone 4** |  | 21.62d | 2018-07-23 | 2018-08-12 |  | 2018-07-23 | 2018-08-12 | 21.75d | 0d |  |  |  | 1025h |
| 117 | 1.4.1 | **Coding (Cont.)** |  | 8.25d | 2018-07-23 | 2018-07-30 |  |  |  |  | 0d |  |  |  | 198h |
| 118 | 1.4.1.1 | Finalize feature scripts | manual | 8.25d | 2018-07-23 | 2018-07-30 |  |  |  |  |  |  |  | Hung Pham; Laura Addiego; Adeola Odusola | 198h |
| 119 | 1.4.2 | **Testing** |  | 6.25d | 2018-07-31 | 2018-08-05 |  |  |  |  | 0d |  |  |  | 59h |
| 120 | 1.4.2.1 | Execute Test cases/scripts | manual | 4d | 2018-07-31 | 2018-08-03 |  | 2018-07-14 | 2018-07-16 | 3d |  |  |  | Hung Pham | 32h |
| 121 | 1.4.2.2 | Regression Testing | manual | 2.25d | 2018-08-04 | 2018-08-05 |  | 2018-07-14 | 2018-07-16 | 3d |  |  |  | Adeola Odusola | 18h |
| 122 | 1.4.2.3 | QA Sign Off for release | manual | 1.12d | 2018-08-05 | 2018-08-05 |  |  |  |  |  |  |  | Samia Alam | 9h |
| 123 | 1.4.3 | **Deployment** |  | 7.12d | 2018-08-06 | 2018-08-12 |  |  |  |  | 0d |  |  |  | 768h |
| 124 | 1.4.3.1 | **Introduce Final Product to Customer** |  | 3d | 2018-08-06 | 2018-08-08 |  |  |  |  | 2d |  |  |  | 24h |
| 125 | 1.4.3.1.1 | Introduce New Features to Stakeholder |  | 2d | 2018-08-06 | 2018-08-07 |  | 2018-07-18 | 2018-07-20 | 2d | 4.25d | 0d | start no earlier than 2018-08-06 | Charles Milk | 16h |
| 126 | 1.4.3.1.2 | Document Staholder's feedback | manual | 1d | 2018-08-08 | 2018-08-08 | 125 | 2018-07-20 | 2018-07-22 | 2d |  |  |  | Kelli Corey | 8h |
| 127 | 1.4.3.2 | **Handover Documents** |  | 7.12d | 2018-08-06 | 2018-08-12 |  | 2018-07-23 | 2018-08-12 | 21d | 0.12d |  |  |  | 256h |
| 128 | 1.4.3.2.1 | Prepare Documenatation |  | 4d | 2018-08-06 | 2018-08-09 |  | 2018-07-23 | 2018-08-01 | 10d | 0.25d | 0d | start no earlier than 2018-08-06 | Samia Alam; Adeola Odusola; Charles Milk; Hung Pham; Kelli Corey; Laura Addiego | 192h |
| 129 | 1.4.3.2.2 | Review Documenation |  | 1d | 2018-08-10 | 2018-08-10 | 128 | 2018-08-01 | 2018-08-06 | 5d | 0.25d | 0d |  | Charles Milk; Samia Alam; Adeola Odusola; Hung Pham; Kelli Corey; Laura Addiego | 48h |
| 130 | 1.4.3.2.3 | Verify All Documents exists in GitHub |  | 1d | 2018-08-11 | 2018-08-11 | 129 | 2018-08-06 | 2018-08-11 | 5d | 0.25d | 0.12d |  | Laura Addiego | 8h |
| 131 | 1.4.3.2.4 | Submit Handover Documenation |  | 1d | 2018-08-12 | 2018-08-12 | 129, 130 | 2018-08-11 | 2018-08-12 | 1d | 0.12d |  | start no earlier than 2018-08-12 | Kelli Corey | 8h |
| 132 | 1.4.3.3 | **Close Project** |  | 6d | 2018-08-06 | 2018-08-11 |  | 2018-07-30 | 2018-08-12 | 14d | 0d |  |  |  | 488h |
| 133 | 1.4.3.3.1 | Assess Satisfaction | manual | 3d | 2018-08-06 | 2018-08-08 |  | 2018-07-30 | 2018-08-05 | 7d |  |  | start no earlier than 2018-08-06 | Charles Milk; Hung Pham; Kelli Corey; Laura Addiego; Samia Alam; Adeola Odusola | 144h |
| 134 | 1.4.3.3.2 | Summarize Project Results and Lessons Learned | manual | 1d | 2018-08-09 | 2018-08-09 | 133 | 2018-08-02 | 2018-08-08 | 7d |  |  |  | Samia Alam | 8h |
| 135 | 1.4.3.3.3 | Review and Recognize Team Performance | manual | 1d | 2018-08-10 | 2018-08-10 | 134 | 2018-08-06 | 2018-08-10 | 5d |  |  | start no earlier than 2018-08-08 | Charles Milk; Hung Pham; Kelli Corey; Laura Addiego; Samia Alam; Adeola Odusola | 48h |
| 136 | 1.4.3.3.4 | **Presentation** |  | 6d | 2018-08-06 | 2018-08-11 |  | 2018-08-02 | 2018-08-12 | 11d | 0d |  |  |  | 288h |
| 137 | 1.4.3.3.4.1 | Prepare Presentation | manual | 5d | 2018-08-06 | 2018-08-10 |  | 2018-08-02 | 2018-08-11 | 10d |  |  |  | Charles Milk; Samia Alam; Adeola Odusola; Hung Pham; Kelli Corey; Laura Addiego | 240h |
| 138 | 1.4.3.3.4.2 | Present and Demo Final Product |  | 1d | 2018-08-11 | 2018-08-11 | 137 | 2018-08-11 | 2018-08-12 | 1d | 1.25d |  | finish no earlier than 2018-08-10 | Kelli Corey; Charles Milk; Samia Alam; Adeola Odusola; Hung Pham; Laura Addiego | 48h |
| 139 | 1.4.3.4 | Milestone 4 - Complete | milestone | 0d | 2018-08-11 | 2018-08-11 | 132 | 2018-08-12 | 2018-08-12 | 0d | 1.25d |  |  |  |  |
| 141 | 1.5 | Requirements | manual | 32d | 2018-05-21 | 2018-06-20 |  | 2018-05-21 | 2018-06-10 | 21.75d |  |  |  |  |  |
| 142 | 1.6 | Design | manual | 13.5d | 2018-06-21 | 2018-07-03 |  | 2018-05-31 | 2018-06-15 | 16.5d |  |  |  |  |  |
| 143 | 1.7 | Coding | manual | 27d | 2018-07-04 | 2018-07-29 |  | 2018-06-11 | 2018-07-30 | 51.75d |  |  |  |  |  |
| 144 | 1.8 | Testing | manual | 7.25d | 2018-07-30 | 2018-08-05 |  |  |  |  |  |  |  |  |  |
| 145 | 1.9 | Deployment & Presentation of Final Product | manual | 7.25d | 2018-08-06 | 2018-08-12 |  |  |  |  |  |  |  |  |  |
| 146 | 1.10 | Monitoring & Controlling | manual | 87d | 2018-05-21 | 2018-08-12 |  | 2018-05-21 | 2018-08-12 | 87d |  |  |  |  |  |
